# Research Proposal Plan

Schedule from MS Project, 2021-05-17 to 2022-08-05.

## Calendars

- Standard: Mon-Fri 08:00-12:00, 13:00-17:00; Sat-Sun off.

## Resources

| Resource |
| --- |
| Loyd Rafols |
| Gaston Carvallo |

## Schedule

| ID | WBS | Task | Type | Duration | Start | Finish | Predecessors | Total slack | Free slack | Constraint | Resources | Work |
| --- | --- | --- | --- | --- | --- | --- | --- | --- | --- | --- | --- | --- |
| 1 | 1 | **REA Project** |  | 320d? | 2021-05-17 | 2022-08-05 |  |  |  | start no earlier than 2021-05-17 |  | 1792h |
| 2 | 1.1 | Project Kickoff | milestone | 0d | 2021-05-17 | 2021-05-17 |  | 0d |  |  |  |  |
| 3 | 1.2 | **Objective 1: Create dataset** |  | 60d | 2021-05-17 | 2021-08-06 |  |  |  |  |  | 240h |
| 4 | 1.2.1 | **Phase 1.1: Deploy testbed** |  | 4.5d | 2021-05-17 | 2021-05-21 |  |  |  |  |  | 40h |
| 5 | 1.2.1.1 | Deploy Kali (attacker) |  | 1d | 2021-05-17 | 2021-05-17 |  | 0.5d | 0d |  | Loyd Rafols | 8h |
| 6 | 1.2.1.2 | Deploy Windows MS3 (victim) |  | 1d | 2021-05-18 | 2021-05-18 | 5 | 0.5d | 0d |  | Loyd Rafols | 8h |
| 7 | 1.2.1.3 | Deploy Ubuntu monitoring server, configure Zeek |  | 1d | 2021-05-19 | 2021-05-19 | 6 | 0.5d | 0d |  | Loyd Rafols | 8h |
| 8 | 1.2.1.4 | Configure Zeek to extract files |  | 1d | 2021-05-20 | 2021-05-20 | 7 | 0.5d | 0d |  | Loyd Rafols | 8h |
| 9 | 1.2.1.5 | Configure port mirroring through managed vSwitch on ESXi hypervisor |  | 0.5d | 2021-05-21 | 2021-05-21 | 8 | 315.5d |  |  | Loyd Rafols | 4h |
| 10 | 1.2.1.6 | Validate network connectivity and configuration |  | 0.5d | 2021-05-21 | 2021-05-21 | 5, 6, 8 | 0.5d | 0d |  | Loyd Rafols | 4h |
| 11 | 1.2.1.7 | Phase 1.1 completion | milestone | 0d | 2021-05-21 | 2021-05-21 | 10 | 0.5d |  |  |  |  |
| 12 | 1.2.2 | **Phase 1.2: Create dataset** |  | 20d | 2021-05-17 | 2021-06-11 |  | 0d |  |  |  | 200h |
| 13 | 1.2.2.1 | Develop automation for creating dataset (scripts Malicious Payloads, Benign Payloads, Host Files and Download Files) | manual | 1w | 2021-05-24 | 2021-05-28 | 11 |  |  | start no earlier than 2021-05-24 | Loyd Rafols | 40h |
| 14 | 1.2.2.2 | Test and debug dataset automation ((scripts Malicious Payloads, Benign Payloads, Host Files and Download Files)) | manual | 4d | 2021-05-31 | 2021-06-03 | 13 |  |  |  | Loyd Rafols | 32h |
| 15 | 1.2.2.3 | Run scripts (scripts Malicious Payloads, Benign Payloads, Host Files and Download Files) | manual | 1d | 2021-06-04 | 2021-06-04 | 14 |  |  |  | Loyd Rafols | 8h |
| 16 | 1.2.2.4 | Create script "Analyse File" | manual | 1w | 2021-05-17 | 2021-05-21 | 2 |  |  |  | Gaston Carvallo | 40h |
| 17 | 1.2.2.5 | Test and debug script "Analyse File" | manual | 1w | 2021-05-24 | 2021-05-28 | 16 |  |  |  | Gaston Carvallo | 40h |
| 18 | 1.2.2.6 | Generate dataset | manual | 1w | 2021-06-07 | 2021-06-11 | 15, 17 |  |  |  | Gaston Carvallo | 40h |
| 19 | 1.2.2.7 | Phase 1.2 completion | milestone | 0d | 2021-06-11 | 2021-06-11 | 18FF | -5d | 0d |  |  |  |
| 20 | 1.2.3 | Objective 1 completion | milestone | 0d | 2021-06-11 | 2021-06-11 | 11, 19 | -5d | 0d |  |  |  |
| 21 | 1.3 | **Objective 2: Model selection** |  | 21d | 2021-06-14 | 2021-07-13 |  | 0d |  |  |  | 200h |
| 22 | 1.3.1 | **Phase 2.1: Model Selection** |  | 21d | 2021-06-14 | 2021-07-13 | 20 | 0d |  |  |  | 200h |
| 23 | 1.3.1.1 | Data pre-processing | manual | 1w | 2021-06-14 | 2021-06-18 |  |  |  |  | Gaston Carvallo | 40h |
| 24 | 1.3.1.2 | Train and validate ML using Random Forest | manual | 1w | 2021-06-21 | 2021-06-25 | 23 |  |  |  | Gaston Carvallo | 32h |
| 25 | 1.3.1.3 | Train and validate ML using C4.5 | manual | 1w | 2021-06-21 | 2021-06-25 | 23 |  |  |  | Loyd Rafols | 40h |
| 26 | 1.3.1.4 | Train and validate ML using Naive Bayes | manual | 1w | 2021-06-28 | 2021-07-02 | 23 |  |  |  | Loyd Rafols | 40h |
| 27 | 1.3.1.5 | Train and validate ML using SVM | manual | 1w | 2021-07-05 | 2021-07-09 | 23 |  |  |  | Loyd Rafols | 40h |
| 28 | 1.3.1.6 | Select classifier | manual | 1d | 2021-07-12 | 2021-07-12 | 27 |  |  |  | Gaston Carvallo | 8h |
| 29 | 1.3.1.7 | Phase 2.1 completion | milestone, manual | 0d | 2021-07-13 | 2021-07-13 | 26, 28 |  |  |  |  |  |
| 30 | 1.3.2 | Objective 2 completion | milestone | 0d | 2021-07-13 | 2021-07-13 | 29FF | 4d |  |  |  |  |

| ID | WBS | Task | Type | Duration | Start | Finish | Predecessors | Total slack | Constraint | Resources | Work |
| --- | --- | --- | --- | --- | --- | --- | --- | --- | --- | --- | --- |
| 31 | 1.4 | **Objective 3: Model implementation** |  | 255d? | 2021-07-19 | 2022-07-08 |  | 0d |  |  | 200h |
| 32 | 1.4.1 | **Phase 3.1: Model implementation** |  | 10d | 2021-07-19 | 2021-07-30 | 30 | 0d |  |  | 80h |
| 33 | 1.4.1.1 | Create script to implement classifier on monitoring server (ML implementation) | manual | 1w | 2021-07-19 | 2021-07-23 | 29 |  |  | Gaston Carvallo | 40h |
| 34 | 1.4.1.2 | Test and debug the script “ML implementation” | manual | 1w | 2021-07-26 | 2021-07-30 | 33 |  |  | Gaston Carvallo | 40h |
| 35 | 1.4.1.3 | Phase 3.1 completion | milestone, manual | 0d | 2021-07-30 | 2021-07-30 | 34FF |  |  |  |  |
| 36 | 1.4.2 | **Phase 3.2 Experiments** |  | 40d? | 2022-05-16 | 2022-07-08 | 35 |  |  |  | 120h |
| 37 | 1.4.2.1 | Design experiments |  | 1w | 2022-05-16 | 2022-05-20 |  | 0d |  | Loyd Rafols | 40h |
| 38 | 1.4.2.2 | Run experiment 1 |  | 1w | 2022-05-23 | 2022-05-27 | 37 | 0d |  | Gaston Carvallo | 40h |
| 39 | 1.4.2.3 | Run experiment 2 |  | 1w | 2022-05-23 | 2022-05-27 | 37 | 0d |  | Loyd Rafols | 40h |
| 40 | 1.4.2.4 | Phase 3.2 completed | milestone | 0d? | 2022-05-27 | 2022-05-27 | 38, 39 | 0d |  |  |  |
| 41 | 1.4.3 | Objective 3 completion | milestone | 0d | 2022-05-27 | 2022-05-27 | 35FF, 40FF | 30d |  |  |  |
| 42 | 1.5 | **Objective 4: Create educational material** |  | 285d | 2021-06-07 | 2022-07-08 |  | 0d |  |  | 832h |
| 43 | 1.5.1 | **Phase 4.1: Labs** |  | 60d | 2021-06-07 | 2021-08-27 | 20 |  |  |  | 352h |
| 44 | 1.5.1.1 | Create Setup Lab | manual | 1w | 2021-06-07 | 2021-06-11 |  |  | start no earlier than 2021-06-07 | Loyd Rafols | 40h |
| 45 | 1.5.1.2 | Create Dataset Lab | manual | 1w | 2021-06-14 | 2021-06-18 |  |  | start no earlier than 2021-06-14 | Loyd Rafols | 40h |
| 46 | 1.5.1.3 | Create Random Forest Lab | manual | 1w | 2021-06-28 | 2021-07-02 |  |  | start no earlier than 2021-06-28 | Gaston Carvallo | 40h |
| 47 | 1.5.1.4 | Create C4.5/Naïve Bayes Lab | manual | 1w | 2021-07-05 | 2021-07-09 |  |  | start no earlier than 2021-07-05 | Gaston Carvallo | 40h |
| 48 | 1.5.1.5 | Revise Setup, Dataset, Random Forest, C4.5/Naïve Bayes Labs | manual | 1w | 2021-07-12 | 2021-07-16 | 44, 45, 46, 47 |  |  | Loyd Rafols | 40h |
| 49 | 1.5.1.6 | Create Model Evaluation Lab | manual | 4d | 2021-07-13 | 2021-07-16 |  |  |  | Gaston Carvallo | 32h |
| 50 | 1.5.1.7 | Revise Model Evaluation Lab | manual | 1w | 2021-07-19 | 2021-07-23 | 49 |  |  | Loyd Rafols | 40h |
| 51 | 1.5.1.8 | Create Hyperparameter Tuning Lab | manual | 1w | 2021-07-26 | 2021-07-30 |  |  |  | Loyd Rafols | 40h |
| 52 | 1.5.1.9 | Revise Hyperparameter Tuning Lab | manual | 1w | 2021-08-02 | 2021-08-06 | 51 |  |  | Gaston Carvallo | 40h |
| 53 | 1.5.1.10 | Phase 4.1 completion | milestone | 0d | 2021-08-06 | 2021-08-06 | 48, 50, 52 | 240d |  |  |  |
| 54 | 1.5.2 | **Phase 4.2: PowerPoint Presentations** |  | 15d | 2022-05-30 | 2022-06-17 | 40 | 0d |  |  | 240h |
| 55 | 1.5.2.1 | Create Setup Lab tutorial presentation |  | 5d | 2022-05-30 | 2022-06-03 |  | 0d |  | Loyd Rafols | 40h |
| 56 | 1.5.2.2 | Create Dataset Lab tutorial presentation |  | 5d | 2022-06-06 | 2022-06-10 | 55 | 0d |  | Loyd Rafols | 40h |
| 57 | 1.5.2.3 | Create Random Forest Lab tutorial presentation |  | 5d | 2022-05-30 | 2022-06-03 |  | 0d |  | Gaston Carvallo | 40h |
| 58 | 1.5.2.4 | Create C4.5/Naïve Bayes Lab tutorial presentation |  | 5d | 2022-06-06 | 2022-06-10 | 57 | 0d |  | Gaston Carvallo | 40h |
| 59 | 1.5.2.5 | Create Model Evaluation Lab tutorial presentation |  | 1w | 2022-06-13 | 2022-06-17 | 56 | 0d |  | Loyd Rafols | 40h |
| 60 | 1.5.2.6 | Create Hyperparameter Tuning Lab tutorial presentation |  | 1w | 2022-06-13 | 2022-06-17 | 58 | 0d |  | Gaston Carvallo | 40h |
| 61 | 1.5.2.7 | Phase 4.2 completion | milestone | 0d | 2022-06-17 | 2022-06-17 | 55, 56, 57, 58, 59, 60 | 0d |  |  |  |

| ID | WBS | Task | Type | Duration | Start | Finish | Predecessors | Total slack | Free slack | Resources | Work |
| --- | --- | --- | --- | --- | --- | --- | --- | --- | --- | --- | --- |
| 62 | 1.5.3 | **Phase 4.3: Presentation and tutorial revision** |  | 15d | 2022-06-20 | 2022-07-08 | 61 | 0d |  |  | 240h |
| 63 | 1.5.3.1 | Revise Setup and Dataset Lab |  | 1w | 2022-06-20 | 2022-06-24 | 61 | 0d |  | Loyd Rafols | 40h |
| 64 | 1.5.3.2 | Revise Model Evaluation Lab |  | 1w | 2022-06-27 | 2022-07-01 | 63 | 0d |  | Loyd Rafols | 40h |
| 65 | 1.5.3.3 | Revise Random Forest and C4.5/Naïve Bayes Lab |  | 1w | 2022-06-20 | 2022-06-24 | 61 | 0d |  | Gaston Carvallo | 40h |
| 66 | 1.5.3.4 | Revise Hyperparameter Tuning Lab |  | 1w | 2022-06-27 | 2022-07-01 | 65 | 0d |  | Gaston Carvallo | 40h |
| 67 | 1.5.3.5 | Review and provide feedback on other group member’s labs and presentations |  | 1w | 2022-07-04 | 2022-07-08 | 63, 64 | 0d |  | Gaston Carvallo | 40h |
| 68 | 1.5.3.6 | Review and provide feedback on other group member’s labs and presentations |  | 1w | 2022-07-04 | 2022-07-08 | 65, 66 | 0d |  | Loyd Rafols | 40h |
| 69 | 1.5.3.7 | Phase 4.3 completion | milestone | 0d | 2022-07-08 | 2022-07-08 | 63, 64, 65, 66, 68, 67 | 0d |  |  |  |
| 70 | 1.5.4 | Objective 4 completion | milestone | 0d | 2022-07-08 | 2022-07-08 | 69, 61, 53 | 0d |  |  |  |
| 71 | 1.6 | **Objective 5: Create final report** |  | 20d | 2022-07-11 | 2022-08-05 |  | 0d |  |  | 320h |
| 72 | 1.6.1 | **Phase 5.1: Report Draft** |  | 10d | 2022-07-11 | 2022-07-22 | 70, 20, 30, 41 | 0d |  |  | 160h |
| 73 | 1.6.1.1 | Write abstract and introduction |  | 1w | 2022-07-11 | 2022-07-15 | 70 | 0d |  | Gaston Carvallo | 40h |
| 74 | 1.6.1.2 | Write literature review and background |  | 1w | 2022-07-11 | 2022-07-15 | 70 | 5d | 0d | Loyd Rafols | 40h |
| 75 | 1.6.1.3 | Write research methodology and experiments |  | 1w | 2022-07-18 | 2022-07-22 | 73 | 0d |  | Gaston Carvallo | 40h |
| 76 | 1.6.1.4 | Write discussion and conclusion |  | 1w | 2022-07-18 | 2022-07-22 | 74 | 10d |  | Loyd Rafols | 40h |
| 77 | 1.6.1.5 | Phase 5.1 completion | milestone | 0d | 2022-07-22 | 2022-07-22 | 73, 74, 75 | 0d |  |  |  |
| 78 | 1.6.2 | **Phase 5.2: Final Report** |  | 10d | 2022-07-25 | 2022-08-05 | 77 | 0d |  |  | 160h |
| 79 | 1.6.2.1 | Revise abstract and introduction |  | 1w | 2022-07-25 | 2022-07-29 | 77 | 0d |  | Gaston Carvallo | 40h |
| 80 | 1.6.2.2 | Revise literature review and background |  | 1w | 2022-07-25 | 2022-07-29 | 77 | 0d |  | Loyd Rafols | 40h |
| 81 | 1.6.2.3 | Revise methodology and experiments |  | 1w | 2022-08-01 | 2022-08-05 | 79 | 0d |  | Gaston Carvallo | 40h |
| 82 | 1.6.2.4 | Revise discussion and conclusion |  | 1w | 2022-08-01 | 2022-08-05 | 80 | 0d |  | Loyd Rafols | 40h |
| 83 | 1.6.2.5 | Phase 5.2 completion | milestone | 0d | 2022-08-05 | 2022-08-05 | 79, 80, 81 | 0d |  |  |  |
| 84 | 1.6.3 | Objective 5 completion | milestone | 0d | 2022-08-05 | 2022-08-05 | 77, 83 | 0d |  |  |  |
