# Research Proposal Plan

Schedule from MS Project, 2021-09-13 to 2022-07-22.

## Calendars

- Standard: Mon-Fri 08:00-12:00, 13:00-17:00; Sat-Sun off.

## Resources

| Resource |
| --- |
| Loyd Rafols |
| Gaston Carvallo |

## Schedule

| ID | WBS | Task | Type | Duration | Start | Finish | Predecessors | Total slack | Free slack | Constraint | Resources | Work |
| --- | --- | --- | --- | --- | --- | --- | --- | --- | --- | --- | --- | --- |
| 1 | 1 | **REA Project** |  | 225d | 2021-09-13 | 2022-07-22 |  | 0d |  |  |  | 4984h |
| 2 | 1.1 | **Objective 1: Implement machine learning model** |  | 55d | 2021-09-13 | 2021-11-29 |  | 170d |  |  |  | 2488h |
| 3 | 1.1.1 | Project Kickoff | milestone | 0d | 2021-09-13 | 2021-09-13 |  | 225d |  | start no earlier than 2021-09-13 |  |  |
| 4 | 1.1.2 | **Phase 1.1: Deploy Testbed** |  | 38d | 2021-09-13 | 2021-11-03 |  | 187d |  |  | Loyd Rafols | 488h |
| 5 | 1.1.2.1 | Deploy Kali (attacker) |  | 1w | 2021-09-13 | 2021-09-17 |  | 205d | 2d | finish no earlier than 2021-09-17 | Loyd Rafols | 40h |
| 6 | 1.1.2.2 | Deploy Windows MS3 (victim) |  | 1w | 2021-09-13 | 2021-09-17 |  | 203d | 0d | finish no earlier than 2021-09-17 | Loyd Rafols | 40h |
| 7 | 1.1.2.3 | Deploy and configure Ubuntu monitoring server |  | 3d | 2021-09-13 | 2021-09-15 |  | 222d |  | finish no earlier than 2021-09-15 | Loyd Rafols | 24h |
| 8 | 1.1.2.4 | Configure Zeek to extract files |  | 2d | 2021-09-20 | 2021-09-21 | 6 | 203d | 0d | finish no earlier than 2021-09-17 | Loyd Rafols | 16h |
| 9 | 1.1.2.5 | Configure port mirroring |  | 3d | 2021-09-13 | 2021-09-15 |  | 187d | 0d | finish no earlier than 2021-09-15 | Loyd Rafols | 24h |
| 10 | 1.1.2.6 | Validate network connectivity and configuration |  | 1w | 2021-09-15 | 2021-09-21 | 5FF, 6FF, 8FF | 203d | 48d | finish no earlier than 2021-09-17 | Loyd Rafols | 40h |
| 11 | 1.1.2.7 | Phase 1.1 completion | milestone | 35d | 2021-09-16 | 2021-11-03 | 9 | 187d |  |  |  |  |
| 12 | 1.1.3 | **Phase 1.2: Create dataset** |  | 25d | 2021-09-13 | 2021-10-15 |  | 190d |  |  | Gaston Carvallo; Loyd Rafols | 680h |
| 13 | 1.1.3.1 | Create script to automate payload generation |  | 1w | 2021-09-13 | 2021-09-17 |  | 220d |  | finish no earlier than 2021-09-17 | Gaston Carvallo | 40h |
| 14 | 1.1.3.2 | Test + debug payload generation script |  | 1w | 2021-09-20 | 2021-09-24 |  | 205d | 5d | finish no earlier than 2021-09-24 | Gaston Carvallo | 40h |
| 15 | 1.1.3.3 | Gather and transmit benign files, and extract benign payloads |  | 1w | 2021-09-20 | 2021-09-24 |  | 205d | 5d | finish no earlier than 2021-09-24 | Loyd Rafols | 40h |
| 16 | 1.1.3.4 | Create and transmit malicious files, and extract malicious payloads |  | 1w | 2021-09-27 | 2021-10-01 |  | 200d | 0d | finish no earlier than 2021-10-01 | Loyd Rafols | 40h |
| 17 | 1.1.3.5 | Create script to process CAPA report |  | 1w | 2021-09-27 | 2021-10-01 |  | 180d | 5d | finish no earlier than 2021-10-01 | Gaston Carvallo | 40h |
| 18 | 1.1.3.6 | Test + debug CAPA processing script |  | 1w | 2021-10-04 | 2021-10-08 | 16, 14, 15 | 200d | 0d | finish no earlier than 2021-10-08 | Gaston Carvallo | 40h |
| 19 | 1.1.3.7 | Clean and label data |  | 1w | 2021-10-11 | 2021-10-15 | 17 | 175d | 0d | finish no earlier than 2021-10-15 | Gaston Carvallo | 40h |
| 20 | 1.1.3.8 | Phase 1.2 completion | milestone | 5d | 2021-10-11 | 2021-10-15 | 18 | 200d |  |  |  |  |
| 21 | 1.1.4 | **Phase 1.3: Feature Selection** |  | 15d | 2021-10-18 | 2021-11-05 | 19 | 175d |  |  | Gaston Carvallo; Loyd Rafols | 320h |
| 22 | 1.1.4.1 | Implement feature selection method 1 (sklearn) |  | 1w | 2021-10-18 | 2021-10-22 |  | 185d | 0d | finish no earlier than 2021-10-22 | Loyd Rafols | 40h |
| 23 | 1.1.4.2 | Implement feature selection method 2 (sklearn) |  | 1w | 2021-10-18 | 2021-10-22 |  | 175d | 0d | finish no earlier than 2021-10-22 | Gaston Carvallo | 40h |
| 24 | 1.1.4.3 | Phase 1.3 completion | milestone | 10d | 2021-10-25 | 2021-11-05 | 22 | 185d |  |  |  |  |

| ID | WBS | Task | Type | Duration | Start | Finish | Predecessors | Total slack | Free slack | Constraint | Resources | Work |
| --- | --- | --- | --- | --- | --- | --- | --- | --- | --- | --- | --- | --- |
| 25 | 1.1.5 | **Phase 1.4: Machine Learning Application** |  | 25d | 2021-10-25 | 2021-11-26 | 23 | 170d |  |  | Gaston Carvallo; Loyd Rafols | 560h |
| 26 | 1.1.5.1 | Train + validate Random Forest algorithm |  | 1w | 2021-10-25 | 2021-10-29 |  | 175d | 5d | finish no earlier than 2021-10-29 | Loyd Rafols | 40h |
| 27 | 1.1.5.2 | Train + validate J48 Decision Tree algorithm |  | 1w | 2021-11-01 | 2021-11-05 |  | 170d | 0d | finish no earlier than 2021-11-05 | Loyd Rafols | 40h |
| 28 | 1.1.5.3 | Train + validate Support Vector Machine algorithm |  | 1w | 2021-10-25 | 2021-10-29 |  | 175d | 5d | finish no earlier than 2021-10-29 | Gaston Carvallo | 40h |
| 29 | 1.1.5.4 | Train + validate Naïve Bayes algorithm |  | 1w | 2021-10-25 | 2021-10-29 |  | 175d | 20d |  | Gaston Carvallo | 40h |
| 30 | 1.1.5.5 | Phase 1.4 completion | milestone | 15d | 2021-11-08 | 2021-11-26 | 26, 27, 28 | 170d |  |  |  |  |
| 31 | 1.1.6 | **Phase 1.5: Model evaluation and implementation** |  | 15d | 2021-11-08 | 2021-11-29 |  | 165d |  |  | Gaston Carvallo; Loyd Rafols | 440h |
| 32 | 1.1.6.1 | Create confusion matrix for all classifiers |  | 1w | 2021-11-08 | 2021-11-12 |  | 165d | 10d | finish no earlier than 2021-11-12 | Loyd Rafols | 40h |
| 33 | 1.1.6.2 | Create ROC chart for all classifiers |  | 1w | 2021-11-15 | 2021-11-19 |  | 160d | 5d | finish no earlier than 2021-11-19 | Loyd Rafols | 40h |
| 34 | 1.1.6.3 | Create classification report for all classifiers |  | 1w | 2021-11-08 | 2021-11-12 |  | 175d | 5d | finish no earlier than 2021-11-12 | Gaston Carvallo | 40h |
| 35 | 1.1.6.4 | Implement classifiers on monitoring server |  | 1w | 2021-11-15 | 2021-11-19 |  | 160d | 5d | finish no earlier than 2021-11-19 | Gaston Carvallo | 40h |
| 36 | 1.1.6.5 | Test and debug classifier implementation |  | 1w | 2021-11-22 | 2021-11-26 | 34 | 170d |  | finish no earlier than 2021-11-26 | Gaston Carvallo | 40h |
| 37 | 1.1.6.6 | Phase 1.5 completion | milestone | 0d | 2021-11-29 | 2021-11-29 | 32, 33, 35 | 155d | 0d | start no earlier than 2021-11-29 |  |  |
| 38 | 1.1.7 | Objective 1 completion | milestone | 26d | 2021-11-29 | 2021-11-29 | 10, 19, 23, 29, 37 | 155d | 120d |  |  |  |
| 39 | 1.2 | **Objective 2: Create educational material** |  | 31d | 2022-05-16 | 2022-06-27 | 38 |  |  |  | Gaston Carvallo; Loyd Rafols | 1536h |
| 40 | 1.2.1 | **Phase 2.1: PowerPoint Presentations** |  | 10d | 2022-05-23 | 2022-06-03 |  | 30d |  |  | Gaston Carvallo; Loyd Rafols | 320h |
| 41 | 1.2.1.1 | Create data gathering presentation |  | 1w | 2022-05-30 | 2022-06-03 |  | 35d | 0d | start no earlier than 2022-05-30 | Loyd Rafols | 40h |
| 42 | 1.2.1.2 | Create feature selection presentation |  | 1w | 2022-05-23 | 2022-05-27 |  | 40d | 5d | start no earlier than 2022-05-23 | Loyd Rafols | 40h |
| 43 | 1.2.1.3 | Create training, validation, and model evaluation presentation |  | 1w | 2022-05-30 | 2022-06-03 |  | 35d | 0d | start no earlier than 2022-05-30 | Gaston Carvallo | 40h |
| 44 | 1.2.1.4 | Create model implementation presentation |  | 1w | 2022-05-23 | 2022-05-27 |  | 30d | 20d | start no earlier than 2022-05-23 | Gaston Carvallo | 40h |
| 45 | 1.2.1.5 | Phase 2.1 completion | milestone | 0d | 2022-06-03 | 2022-06-03 | 41, 42, 43 | 35d |  |  |  |  |
| 46 | 1.2.2 | **Phase 2.2: Labs** |  | 10d | 2022-05-16 | 2022-05-27 |  | 35d |  |  | Gaston Carvallo; Loyd Rafols | 320h |
| 47 | 1.2.2.1 | Create tutorial for data gathering |  | 1w | 2022-05-16 | 2022-05-20 |  | 45d | 5d | finish no earlier than 2022-01-21 | Loyd Rafols | 40h |
| 48 | 1.2.2.2 | Create tutorial for feature selection |  | 1w | 2022-05-23 | 2022-05-27 |  | 40d | 0d | start no earlier than 2022-05-23 | Loyd Rafols | 40h |
| 49 | 1.2.2.3 | Create tutorial for training, validation and model evaluation |  | 1w | 2022-05-16 | 2022-05-20 |  | 45d | 5d | finish no earlier than 2022-01-21 | Gaston Carvallo | 40h |
| 50 | 1.2.2.4 | Create tutorial for model implementation |  | 1w | 2022-05-23 | 2022-05-27 |  | 30d | 20d | start no earlier than 2022-05-23 | Gaston Carvallo | 40h |
| 51 | 1.2.2.5 | Phase 2.2 completion | milestone | 0d | 2022-05-27 | 2022-05-27 | 47, 48, 49 | 40d |  |  |  |  |

| ID | WBS | Task | Type | Duration | Start | Finish | Predecessors | Total slack | Free slack | Constraint | Resources | Work |
| --- | --- | --- | --- | --- | --- | --- | --- | --- | --- | --- | --- | --- |
| 52 | 1.2.3 | **Phase 2.3: Lab revision** |  | 15d | 2022-06-06 | 2022-06-24 |  | 20d |  |  | Gaston Carvallo; Loyd Rafols | 400h |
| 53 | 1.2.3.1 | Revise tutorial for data gathering |  | 1w | 2022-06-06 | 2022-06-10 |  | 30d | 10d | start no earlier than 2022-06-06 | Loyd Rafols | 40h |
| 54 | 1.2.3.2 | Revise tutorial for feature selection |  | 1w | 2022-06-13 | 2022-06-17 |  | 25d | 5d | start no earlier than 2022-06-13 | Loyd Rafols | 40h |
| 55 | 1.2.3.3 | Revise tutorial for training, validation, and model evaluation |  | 1w | 2022-06-06 | 2022-06-10 |  | 30d | 10d | start no earlier than 2022-06-06 | Gaston Carvallo | 40h |
| 56 | 1.2.3.4 | Revise tutorial for model implementation |  | 1w | 2022-06-13 | 2022-06-17 |  | 15d | 5d | start no earlier than 2022-06-13 | Gaston Carvallo | 40h |
| 57 | 1.2.3.5 | Review and provide feedback on othjer group member's labs and presentations |  | 1w | 2022-06-20 | 2022-06-24 |  | 20d | 0d | start no earlier than 2022-06-20 |  |  |
| 58 | 1.2.3.6 | Phase 2.3 completion | milestone | 0d | 2022-06-24 | 2022-06-24 | 53, 54, 55, 56, 57 | 20d |  |  |  |  |
| 59 | 1.2.4 | Objective 2 completion | milestone | 0d | 2022-06-27 | 2022-06-27 | 44, 50, 56 | 10d | 0d | start no earlier than 2022-06-27 |  |  |
| 60 | 1.3 | **Objective 3: Create final report** |  | 20d | 2022-06-27 | 2022-07-22 | 38, 59 | 0d |  |  | Gaston Carvallo; Loyd Rafols | 960h |
| 61 | 1.3.1 | **Phase 3.1: Report Drafting** |  | 10d | 2022-06-27 | 2022-07-08 |  | 10d |  |  | Gaston Carvallo; Loyd Rafols | 320h |
| 62 | 1.3.1.1 | Write abstract and introduction |  | 1w | 2022-06-27 | 2022-07-01 |  | 15d | 5d | finish no earlier than 2022-02-28 | Gaston Carvallo | 40h |
| 63 | 1.3.1.2 | Write literature review and background |  | 1w | 2022-06-27 | 2022-07-01 |  | 15d | 5d | finish no earlier than 2022-02-28 | Loyd Rafols | 40h |
| 64 | 1.3.1.3 | Write research methodology and experiments |  | 1w | 2022-07-04 | 2022-07-08 |  | 10d | 0d | start no earlier than 2022-07-04 | Gaston Carvallo | 40h |
| 65 | 1.3.1.4 | Write discussion and conclusion |  | 1w | 2022-07-04 | 2022-07-08 |  | 5d | 0d | start no earlier than 2022-07-04 | Loyd Rafols | 40h |
| 66 | 1.3.1.5 | Phase 3.1 completion | milestone | 0d | 2022-07-08 | 2022-07-08 | 62, 63, 64 | 10d |  |  |  |  |
| 67 | 1.3.2 | **Phase 3.2: Final Report** |  | 10d | 2022-07-11 | 2022-07-22 | 65 | 0d |  |  | Gaston Carvallo; Loyd Rafols | 320h |
| 68 | 1.3.2.1 | Revise abstract and introduction |  | 1w | 2022-07-11 | 2022-07-15 |  | 5d |  | finish no earlier than 2022-03-11 | Gaston Carvallo | 40h |
| 69 | 1.3.2.2 | Revise literature review and background |  | 1w | 2022-07-11 | 2022-07-15 |  | 5d |  | finish no earlier than 2022-03-11 | Loyd Rafols | 40h |
| 70 | 1.3.2.3 | Revise methodology and experiments |  | 1w | 2022-07-18 | 2022-07-22 |  | 0d |  | start no earlier than 2022-07-18 | Gaston Carvallo | 40h |
| 71 | 1.3.2.4 | Revise discussion and conclusion |  | 1w | 2022-07-18 | 2022-07-22 |  | 0d |  | start no earlier than 2022-07-18 | Loyd Rafols | 40h |
| 72 | 1.3.2.5 | Phase 3.2 completion | milestone | 0d | 2022-07-22 | 2022-07-22 | 68, 69, 70 | 0d |  | finish no earlier than 2022-03-18 |  |  |
| 73 | 1.3.3 | Objective 3 completion | milestone | 0d | 2022-07-22 | 2022-07-22 | 66, 72 | 0d |  |  |  |  |
